# Neuer Aussenstandort

Schedule from MS Project, 2025-05-26 to 2025-12-23, costs in CHF.
IT-AG

## Calendars

- Standard: Mon-Fri 08:00-12:00, 13:00-17:00; Sat-Sun off.

## Resources

| Resource | Group | Rate |
| --- | --- | --- |
| Eden Bruderer | IT-AG | 120 |
| David Strainovic | IT-AG | 100 |
| Okram Itellof | IT-AG | 100 |
| Rainer Ernst | IT-AG | 100 |
| Kevin Ammersinn | Zügel-GMBH | 100 |
| Bernd Notarius | Notar | 100 |
| Marvin Beak | IT-AG | 100 |
| Janis Wood | IT-AG | 100 |

## Schedule

| ID | WBS | Task | Type | Duration | Start | Finish | Predecessors | Total slack | Free slack | Resources | Work | Cost | Lieferobjekt | Aufwand |
| --- | --- | --- | --- | --- | --- | --- | --- | --- | --- | --- | --- | --- | --- | --- |
| 1 | 1 | **Vor-Analyse** |  | 7d | 2025-05-26 | 2025-06-03 |  | 0d |  |  | 44h | 4,720 |  |  |
| 2 | 1.1 | Projektauftrag erstellen |  | 1d | 2025-05-26 | 2025-05-26 |  | -3.8d | 0d | Rainer Ernst [50%] | 4h | 400 | Projektauftrag | 8h |
| 3 | 1.2 | Projektauftrag prüfen |  | 4d | 2025-05-26 | 2025-05-29 |  | 3d |  | Eden Bruderer [50%] | 16h | 1,920 |  | 12h |
| 4 | 1.3 | Rahmenbedingungen klären |  | 4d | 2025-05-27 | 2025-05-30 | 2 | 0d |  | David Strainovic [50%] | 16h | 1,600 | Konzept | 8h |
| 5 | 1.4 | Risikoanalyse |  | 2d | 2025-06-02 | 2025-06-03 | 4 | 0d |  | Janis Wood [50%] | 8h | 800 | Risikobericht | 20h |
| 6 | 1.5 | MS: Projekt bewilligt | milestone | 0d | 2025-05-26 | 2025-05-26 |  | 3.2d |  |  |  |  |  |  |
| 7 | 2 | **Konzept-Evaluation** |  | 6d | 2025-06-03 | 2025-06-11 | 1 | 0d |  |  | 32h | 3,680 |  |  |
| 8 | 2.1 | Pflichtenheft |  | 2d | 2025-06-04 | 2025-06-05 |  | 4d |  | Janis Wood [50%] | 8h | 800 | Pflichtenheft | 12h |
| 9 | 2.2 | Expertengespräche durchführen |  | 6d | 2025-06-04 | 2025-06-11 |  | 0d |  | Eden Bruderer [50%] | 24h | 2,880 |  | 24h |
| 10 | 2.3 | MS: Projekt erfolgreich zu Ende gebracht | milestone | 0d | 2025-06-03 | 2025-06-03 |  | 2.2d |  |  |  |  |  |  |
| 11 | 3 | **Umsetzungsplanung** |  | 89d | 2025-06-11 | 2025-10-14 | 7 | 0d |  |  | 376h | 43,600 |  |  |
| 12 | 3.1 | Projektstrukturplan erstellen |  | 4d | 2025-06-12 | 2025-06-17 |  | 0d |  | David Strainovic [50%] | 16h | 1,600 | PSP | 16h |
| 13 | 3.2 | Liegenschaftsliste erstellen |  | 8d | 2025-06-18 | 2025-06-27 | 12 | 0d |  | Okram Itellof [50%] | 32h | 3,200 | Gebäude rausgesucht | 16h |
| 14 | 3.3 | Liegenschaften besichtigen |  | 75d | 2025-06-30 | 2025-10-10 | 13 | 0d |  | Eden Bruderer [50%] | 300h | 36,000 |  | 80h |
| 15 | 3.4 | Nutzwertanalyse der Liegenschaften |  | 2d | 2025-10-13 | 2025-10-14 | 14 | 0d |  | Marvin Beak [50%] | 8h | 800 | Nutzwertanalyse | 8h |
| 16 | 3.5 | Offerten für Einrichtung einholen |  | 5d | 2025-06-12 | 2025-06-18 |  | 46.5d |  | Marvin Beak [50%] | 20h | 2,000 | Offerten | 10h |
| 17 | 3.6 | MS: Für ein Gebäude entschieden | milestone | 0d | 2025-06-11 | 2025-06-11 |  | 47.7d |  |  |  |  |  |  |
| 18 | 4 | **Realisierung** |  | 42d | 2025-10-14 | 2025-12-11 | 11 | 0d |  |  | 332h | 33,200 |  |  |
| 19 | 4.1 | Mietvertrag prüfen & unterzeichnen |  | 4d | 2025-10-15 | 2025-10-20 |  | 1d | 0d | Bernd Notarius | 16h | 1,600 | Vertrag | 16h |
| 20 | 4.2 | Einrichtung bestellen |  | 42d | 2025-10-15 | 2025-12-11 |  | 0d |  | Janis Wood [50%] | 168h | 16,800 | Büroeinrichtung | 8h |
| 21 | 4.3 | Gebäude übernehmen |  | 12d | 2025-10-21 | 2025-11-05 | 19 | 1d | 0d | David Strainovic [50%] | 48h | 4,800 | Schlüssel für das Gebäude & Papierkram | 24h |
| 22 | 4.4 | IT-Infrastruktur einrichten |  | 25d | 2025-11-06 | 2025-12-10 | 21 | 1d |  | Okram Itellof [50%] | 100h | 10,000 | Funktionierende Infrastruktur | 100h |
| 23 | 4.5 | MS: Standort bereit zur Einführung | milestone | 0d | 2025-10-14 | 2025-10-14 |  | 42d |  |  |  |  |  |  |
| 24 | 5 | **Einführung** |  | 8d | 2025-12-11 | 2025-12-23 | 18 | 0d |  |  | 52h | 5,760 |  |  |
| 25 | 5.1 | Neuer Standort den Mitarbeitern übergeben |  | 1d | 2025-12-12 | 2025-12-12 |  | 7d |  | Rainer Ernst [50%]; Eden Bruderer [50%] | 8h | 880 |  | 4h |
| 26 | 5.2 | Einweihungsfest |  | 2d | 2025-12-12 | 2025-12-15 |  | 0d |  | Marvin Beak [50%] | 8h | 800 | Glückliche Mitarbeiter | 8h |
| 27 | 5.3 | Abschlussmeeting |  | 6d | 2025-12-16 | 2025-12-23 | 26 | 0d |  | Eden Bruderer [50%]; Rainer Ernst [50%] | 36h | 4,080 |  | 4h |
| 28 | 5.4 | MS: Projektergebnis erfolgreich getestet und eingeführt | milestone | 0d | 2025-12-11 | 2025-12-11 |  | 8d |  |  |  |  |  |  |
